# Remote Contacts

Schedule from MS Project, 2008-11-28 to 2009-01-23.
Synrc Research Center

## Calendars

- Standard: Mon-Fri 08:00-12:00, 13:00-17:00; Sat-Sun off.

## Resources

| Resource |
| --- |
| MES |
| SECOND |

## Schedule

| ID | WBS | Task | Duration | Start | Finish | Predecessors | Total slack | Free slack | Resources | Work |
| --- | --- | --- | --- | --- | --- | --- | --- | --- | --- | --- |
| 2 | 1 | **Common** | 7d | 2008-11-28 | 2008-12-08 |  | 12d | 0d |  | 72h |
| 3 | 1.1 | Development Environment | 2d | 2008-11-28 | 2008-12-01 |  | 17d |  | MES | 16h |
| 4 | 1.2 | Checkout Sources | 2d | 2008-11-28 | 2008-12-01 |  | 12d | 0d | MES | 16h |
| 5 | 1.3 | Create and Define Build Process | 3d | 2008-12-02 | 2008-12-04 | 4 | 12d | 0d | MES | 24h |
| 6 | 1.4 | Install Java / IDEA | 2d | 2008-12-05 | 2008-12-08 | 5 | 12d |  | MES | 16h |
| 7 | 2 | **SyncML Server** | 14d | 2008-12-09 | 2008-12-26 | 2 | 9d | 0d |  | 128h |
| 8 | 2.1 | vCard LDAP Connector | 2d | 2008-12-09 | 2008-12-10 |  | 21d |  | MES | 16h |
| 9 | 2.2 | iCal LDAP Connector | 5d | 2008-12-09 | 2008-12-15 |  | 12d | 0d | MES | 40h |
| 10 | 2.3 | SIFT Connector | 2d | 2008-12-16 | 2008-12-17 | 9 | 9d | 0d | MES | 16h |
| 11 | 2.4 | LDAP Admin Panel | 2d | 2008-12-18 | 2008-12-19 | 10 | 9d | 0d | MES | 16h |
| 12 | 2.5 | LDAP Officer | 5d | 2008-12-22 | 2008-12-26 | 11 | 9d |  | MES | 40h |
| 13 | 3 | **XMPP Server** | 2d | 2008-12-29 | 2008-12-30 | 7 | 9d | 0d |  | 16h |
| 14 | 3.1 | LDAP Roster | 2d | 2008-12-29 | 2008-12-30 |  | 9d |  | MES | 16h |
| 15 | 4 | **Directory Server** | 9d | 2008-12-31 | 2009-01-12 | 13 | 9d |  |  | 72h |
| 16 | 4.1 | Define Schema | 3d | 2008-12-31 | 2009-01-02 |  | 9d | 0d | MES | 24h |
| 17 | 4.2 | Configure Installation Process | 3d | 2009-01-05 | 2009-01-07 | 16 | 9d | 0d | MES | 24h |
| 18 | 4.3 | Define Scripts | 3d | 2009-01-08 | 2009-01-12 | 17 | 9d |  | MES | 24h |
| 19 | 5 | **Web Site** | 41d | 2008-11-28 | 2009-01-23 |  | 0d |  |  | 328h |
| 20 | 5.1 | Choose Framework | 3d | 2008-11-28 | 2008-12-02 |  | 0d |  | SECOND | 24h |
| 21 | 5.2 | Main Page / Design | 2d | 2008-12-03 | 2008-12-04 | 20 | 0d |  | SECOND | 16h |
| 22 | 5.3 | Login Page | 2d | 2008-12-05 | 2008-12-08 | 21 | 0d |  | SECOND | 16h |
| 23 | 5.4 | Contact List Page | 5d | 2008-12-09 | 2008-12-15 | 22 | 0d |  | SECOND | 40h |
| 24 | 5.5 | Contact Editor | 2d | 2008-12-16 | 2008-12-17 | 23 | 0d |  | SECOND | 16h |
| 25 | 5.6 | Contact Viiew | 2d | 2008-12-18 | 2008-12-19 | 24 | 0d |  | SECOND | 16h |
| 26 | 5.7 | Calendar View | 5d | 2008-12-22 | 2008-12-26 | 25 | 0d |  | SECOND | 40h |
| 27 | 5.8 | Calendar Editor | 5d | 2008-12-29 | 2009-01-02 | 26 | 0d |  | SECOND | 40h |
| 28 | 5.9 | Task View | 5d | 2009-01-05 | 2009-01-09 | 27 | 0d |  | SECOND | 40h |
| 29 | 5.10 | Task Editor | 5d | 2009-01-12 | 2009-01-16 | 28 | 0d |  | SECOND | 40h |
| 30 | 5.11 | Task List | 5d | 2009-01-19 | 2009-01-23 | 29 | 0d |  | SECOND | 40h |
